Schedule from OmniPlan.
Project start 2015-11-04

## Resources

| Resource | Group |
| --- | --- |
| Resource 1 | staff |
| Equipment 1 | equipment |
| Material 1 | material |
| Group 1 | group |
| 黄玉辉 | staff |
| 陈新存 | staff |
| 刘云鹏 | staff |
| 林思敏 | staff |

## Schedule

| ID | WBS | Task | Constraint | Resources | Work |
| --- | --- | --- | --- | --- | --- |
| 1 | 1 | **并读新闻 iOS 2.0.0 开发计划** |  |  |  |
| 2 | 1.1 | **UI框架搭建** | start no earlier than 2015-12-10 |  |  |
| 3 | 1.1.1 | 生活方式 | start no earlier than 2015-12-10 | 黄玉辉 | 8h |
| 4 | 1.1.2 | 个人中心 | start no earlier than 2015-12-10 | 黄玉辉 | 8h |
| 5 | 1.2 | 系统设置（UIUX） |  | 陈新存 | 8h |
| 6 | 1.3 | 新闻收藏（UIUX） |  | 林思敏 | 8h |
| 7 | 1.4 | **并友** |  |  |  |
| 8 | 1.4.1 | 并友（UIUX） | start no earlier than 2015-12-10 | 刘云鹏 | 8h |
| 9 | 1.4.2 | 通讯录（UIUX） | start no earlier than 2015-12-10 | 林思敏 | 8h |
| 10 | 1.5 | 集市（UIUX） |  | 林思敏 | 8h |
| 11 | 1.6 | **任务** |  |  |  |
| 12 | 1.6.1 | UIUX | start no earlier than 2015-12-10 | 陈新存 | 8h |
| 13 | 1.6.2 | 业务逻辑 | start no earlier than 2015-12-10 | 陈新存 | 8h |
| 14 | 1.7 | **文章详情** |  |  |  |
| 15 | 1.7.1 | 生活方式（UIUX） | start no earlier than 2015-12-10 | 刘云鹏 | 8h |
| 16 | 1.7.2 | 即时新闻（UIUX） | start no earlier than 2015-12-10 | 刘云鹏 | 8h |
| 17 | 1.8 | 视频播放 |  | 刘云鹏 | 8h |
| 18 | 1.9 | 百科词条 | start no earlier than 2015-12-10 | 刘云鹏 | 8h |
| 19 | 1.10 | **生活方式** | start no earlier than 2015-12-10 |  |  |
| 20 | 1.10.1 | **精选文章列表** | start no earlier than 2015-12-10 |  |  |
| 21 | 1.10.1.1 | UIUX | start no earlier than 2015-12-10 | 黄玉辉 | 8h |
| 22 | 1.10.1.2 | 业务逻辑 | start no earlier than 2015-12-10 | 黄玉辉 | 8h |
| 23 | 1.10.1.3 | 接口调试 | start no earlier than 2015-12-10 | 黄玉辉 | 8h |
| 24 | 1.10.2 | **分类标签列表** | start no earlier than 2015-12-10 |  |  |
| 25 | 1.10.2.1 | UIUX | start no earlier than 2015-12-10 | 陈新存 | 8h |
| 26 | 1.10.2.2 | 业务逻辑 | start no earlier than 2015-12-10 | 陈新存 | 8h |
| 27 | 1.10.2.3 | 接口调试 | start no earlier than 2015-12-10 | 陈新存 | 8h |

| ID | WBS | Task | Constraint | Resources | Work |
| --- | --- | --- | --- | --- | --- |
| 28 | 1.10.3 | **标签文章列表** | start no earlier than 2015-12-10 |  |  |
| 29 | 1.10.3.1 | UIUX | start no earlier than 2015-12-10 | 林思敏 | 8h |
| 30 | 1.10.3.2 | 业务逻辑 | start no earlier than 2015-12-10 | 林思敏 | 8h |
| 31 | 1.10.3.3 | 接口调试 | start no earlier than 2015-12-10 | 林思敏 | 8h |
| 32 | 1.11 | 新启动引导页 | start no earlier than 2015-12-10 | 陈新存 | 8h |
| 33 | 1.12 | 新闻直播推送 | start no earlier than 2015-12-10 | 陈新存 | 8h |
